# Santander Cycles Management Tool

Schedule from MS Project, 2021-02-15 to 2021-05-11, costs in €.

## Calendars

- Personalised Calendar: Mon-Fri 08:00-12:00, 13:00-17:00; Sat-Sun off. Exceptions (off unless hours are given): 2021-04-05 (Easter Monday).

## Resources

| Resource | Rate |
| --- | --- |
| Project manager | 100 |
| Data scientist | 80 |
| Software developer | 60 |
| Software tester | 50 |
| Consultant | 60 |
| Travel expenses | 200 |
| OpenWeather license | 0.94 |
| Accomodation expenses | 37.5 |

## Schedule

| ID | WBS | Task | Type | Duration | Start | Finish | Predecessors | Total slack | Free slack | Resources | Work | Cost |
| --- | --- | --- | --- | --- | --- | --- | --- | --- | --- | --- | --- | --- |
| 1 | 1 | Project kickoff | milestone | 0d | 2021-02-15 | 2021-02-15 |  | 61d | 0d |  |  |  |
| 2 | 2 | **PM activities** |  | 61d | 2021-02-15 | 2021-05-11 |  | 0d |  | Project manager [50%] | 244h | 24,400 |
| 3 | 2.1 | Start of PM activites | milestone | 0d | 2021-02-15 | 2021-02-15 | 1SS | 61d |  |  |  |  |
| 4 | 2.2 | End of PM activities | milestone | 0d | 2021-05-11 | 2021-05-11 | 58FF | 0d |  |  |  |  |
| 5 | 3 | **Data Understanding** |  | 6d | 2021-02-15 | 2021-02-22 |  | 0d |  |  | 72h | 4,960 |
| 6 | 3.1 | **Collect Data** |  | 2d | 2021-02-15 | 2021-02-16 |  | 0d |  |  | 40h | 2,400 |
| 7 | 3.1.1 | Collect bike usage data from company's database |  | 2d | 2021-02-15 | 2021-02-16 |  | 0d |  | Consultant; Software developer | 32h | 1,920 |
| 8 | 3.1.2 | Collect weather information from OpenWeather |  | 1d | 2021-02-15 | 2021-02-15 | 7SS | 1d |  | Software developer | 8h | 480 |
| 9 | 3.2 | **Perform data profiling** |  | 4d | 2021-02-17 | 2021-02-22 | 6 | 0d |  |  | 32h | 2,560 |
| 10 | 3.2.1 | Perform single column analysis |  | 1d | 2021-02-17 | 2021-02-17 |  | 0d |  | Data scientist | 8h | 640 |
| 11 | 3.2.2 | Understand data structure |  | 1d | 2021-02-18 | 2021-02-18 | 10 | 0d |  | Data scientist | 8h | 640 |
| 12 | 3.2.3 | Perform data quality assessment |  | 2d | 2021-02-19 | 2021-02-22 | 11 | 0d |  | Data scientist | 16h | 1,280 |
| 13 | 3.3 | Data profiling report | milestone | 0d | 2021-02-22 | 2021-02-22 | 9 | 0d |  |  |  |  |
| 14 | 4 | Data collected and profiled | milestone | 0d | 2021-02-22 | 2021-02-22 | 5 | 55d |  |  |  |  |
| 15 | 5 | **Data Preparation** |  | 11d | 2021-02-23 | 2021-03-09 | 5 | 0d |  |  | 160h | 10,880 |
| 16 | 5.1 | **Combine Bike Usage Data** |  | 3d | 2021-02-23 | 2021-02-25 |  | 0d |  |  | 24h | 1,760 |
| 17 | 5.1.1 | Select appropriate attributes from bike sharing csv files |  | 1d | 2021-02-23 | 2021-02-23 |  | 0d |  | Data scientist | 8h | 640 |
| 18 | 5.1.2 | Group bike usage by hour |  | 1d | 2021-02-24 | 2021-02-24 | 17 | 0d |  | Data scientist | 8h | 640 |
| 19 | 5.1.3 | Combine different datasets into one |  | 1d | 2021-02-25 | 2021-02-25 | 18 | 0d |  | Software developer | 8h | 480 |
| 20 | 5.2 | Clean Data |  | 2d | 2021-02-26 | 2021-03-01 | 16 | 0d |  | Data scientist; Software developer | 32h | 2,240 |
| 21 | 5.3 | **Construct Data** |  | 1d | 2021-03-02 | 2021-03-02 | 20 | 0d |  |  | 24h | 1,600 |
| 22 | 5.3.1 | Extract features from date |  | 1d | 2021-03-02 | 2021-03-02 |  | 0d |  | Data scientist [50%]; Software developer | 12h | 800 |
| 23 | 5.3.2 | Extract features from weather data |  | 1d | 2021-03-02 | 2021-03-02 | 22SS | 0d |  | Data scientist [50%]; Software developer | 12h | 800 |
| 24 | 5.4 | Integrate bike usage and weather data |  | 3d | 2021-03-03 | 2021-03-05 | 21 | 0d |  | Data scientist; Software developer | 48h | 3,360 |
| 25 | 5.5 | Format Data |  | 2d | 2021-03-08 | 2021-03-09 | 24 | 0d |  | Software developer [200%] | 32h | 1,920 |
| 26 | 6 | Bike usage and weather data cleaned and combined | milestone | 0d | 2021-03-09 | 2021-03-09 | 15 | 44d |  |  |  |  |

| ID | WBS | Task | Type | Duration | Start | Finish | Predecessors | Total slack | Free slack | Resources | Work | Cost |
| --- | --- | --- | --- | --- | --- | --- | --- | --- | --- | --- | --- | --- |
| 27 | 7 | **Data analysis and visualisation** |  | 10d | 2021-03-10 | 2021-03-23 | 15 | 10d | 0d |  | 120h | 7,680 |
| 28 | 7.1 | Perform grouping by variables of interest |  | 2d | 2021-03-10 | 2021-03-11 |  | 10d | 0d | Data scientist [50%]; Software developer | 24h | 1,600 |
| 29 | 7.2 | Analyse data |  | 4d | 2021-03-12 | 2021-03-17 | 28 | 10d | 0d | Data scientist [50%]; Software developer | 48h | 3,200 |
| 30 | 7.3 | Produce visualisations and plots |  | 4d | 2021-03-18 | 2021-03-23 | 29 | 10d |  | Software developer [150%] | 48h | 2,880 |
| 31 | 8 | Data visualisation of enriched data produced | milestone | 0d | 2021-03-23 | 2021-03-23 | 27 | 34d |  |  |  |  |
| 32 | 9 | **Modeling** |  | 20d | 2021-03-10 | 2021-04-07 | 15 | 0d |  |  | 236h | 16,400 |
| 33 | 9.1 | Perform feature engineering |  | 4d | 2021-03-10 | 2021-03-15 |  | 0d |  | Data scientist [50%]; Software developer | 48h | 3,200 |
| 34 | 9.2 | Generate Train, Validation and Test sets |  | 1d | 2021-03-16 | 2021-03-16 | 33 | 0d |  | Data scientist [50%] | 4h | 320 |
| 35 | 9.3 | **Select the best regression model** |  | 7d | 2021-03-17 | 2021-03-25 | 34 | 0d |  |  | 56h | 3,920 |
| 36 | 9.3.1 | Exploit different regression techniques |  | 3d | 2021-03-17 | 2021-03-19 |  | 0d |  | Data scientist [50%]; Software developer [50%] | 24h | 1,680 |
| 37 | 9.3.2 | Perform parameter tuning on most promising models |  | 4d | 2021-03-22 | 2021-03-25 | 36 | 0d |  | Data scientist [50%]; Software developer [50%] | 32h | 2,240 |
| 38 | 9.4 | Build Model |  | 3d | 2021-03-26 | 2021-03-30 | 35 | 0d |  | Data scientist; Software developer | 48h | 3,360 |
| 39 | 9.5 | Evaluate Model |  | 3d | 2021-03-31 | 2021-04-02 | 38 | 0d |  | Data scientist; Software developer | 48h | 3,360 |
| 40 | 9.6 | Predict upcoming bike rentals |  | 2d | 2021-04-06 | 2021-04-07 | 39 | 0d |  | Data scientist; Software developer | 32h | 2,240 |
| 41 | 10 | Predicted model built and evaluated | milestone | 0d | 2021-04-07 | 2021-04-07 | 32 | 24d |  |  |  |  |
| 42 | 11 | **Tool implementation** |  | 17d | 2021-04-09 | 2021-05-03 | 32FS+1d, 27FS+1d | 0d |  |  | 232h | 13,520 |
| 43 | 11.1 | Define GUI |  | 6d | 2021-04-09 | 2021-04-16 |  | 0d |  | Software developer [200%] | 96h | 5,760 |
| 44 | 11.2 | Connect Satander Cycles database |  | 1d | 2021-04-19 | 2021-04-19 | 43 | 0d |  | Software developer [200%] | 16h | 960 |
| 45 | 11.3 | Include developed features |  | 5d | 2021-04-20 | 2021-04-26 | 44 | 0d |  | Software developer [200%] | 80h | 4,800 |
| 46 | 11.4 | **Software Testing** |  | 5d | 2021-04-27 | 2021-05-03 | 45 | 0d |  |  | 40h | 2,000 |
| 47 | 11.4.1 | Test database connection |  | 1d | 2021-04-27 | 2021-04-27 |  | 0d |  | Software tester | 8h | 400 |
| 48 | 11.4.2 | Test functionalities |  | 3d | 2021-04-28 | 2021-04-30 | 47 | 0d |  | Software tester | 24h | 1,200 |
| 49 | 11.4.3 | Test aesthetic |  | 1d | 2021-05-03 | 2021-05-03 | 48 | 0d |  | Software tester | 8h | 400 |
| 50 | 11.5 | Application tested | milestone | 0d | 2021-05-03 | 2021-05-03 | 46 | 0d |  |  |  |  |
| 51 | 12 | Customised on-premise tool developed | milestone | 0d | 2021-05-03 | 2021-05-03 | 42 | 6d |  |  |  |  |

| ID | WBS | Task | Type | Duration | Start | Finish | Predecessors | Total slack | Constraint | Resources | Work | Cost |
| --- | --- | --- | --- | --- | --- | --- | --- | --- | --- | --- | --- | --- |
| 52 | 13 | **Deployment** |  | 6d | 2021-05-04 | 2021-05-11 | 42 | 0d |  |  | 136h | 8,480 |
| 53 | 13.1 | Tool installation |  | 1d | 2021-05-04 | 2021-05-04 |  | 0d |  | Software developer [200%]; Consultant | 24h | 1,440 |
| 54 | 13.2 | On-premise tool installed | milestone | 0d | 2021-05-04 | 2021-05-04 | 53 | 5d |  |  |  |  |
| 55 | 13.3 | Plan Monitoring and Maintenance |  | 1d | 2021-05-05 | 2021-05-05 | 53 | 0d |  | Consultant; Data scientist | 16h | 1,120 |
| 56 | 13.4 | Produce Final reports and documentation |  | 2d | 2021-05-06 | 2021-05-07 | 55 | 0d |  | Consultant | 16h | 960 |
| 57 | 13.5 | Review Project |  | 2d | 2021-05-10 | 2021-05-11 | 56 | 0d |  | Consultant; Data scientist; Software developer [200%]; Software tester | 80h | 4,960 |
| 58 | 14 | Project end | milestone | 0d | 2021-05-11 | 2021-05-11 | 52 | 0d | finish no later than 2021-05-11 |  |  |  |
| 59 | 15 | **OpenWeather License** |  | 61d | 2021-02-15 | 2021-05-11 |  | 0d |  | OpenWeather license | 488h | 457.5 |
| 60 | 15.1 | Start use of license | milestone | 0d | 2021-02-15 | 2021-02-15 | 1SS | 61d |  |  |  |  |
| 61 | 15.2 | End use of license | milestone | 0d | 2021-05-11 | 2021-05-11 | 58FF | 0d |  |  |  |  |
| 62 | 16 | **Travel to London** |  | 23d | 2021-04-09 | 2021-05-11 |  | 0d |  | Accomodation expenses; Travel expenses [200%] | 184h | 7,300 |
| 63 | 16.1 | Start of accomodation | milestone | 0d | 2021-04-09 | 2021-04-09 | 42SS | 23d |  |  |  |  |
| 64 | 16.2 | End of accomodation | milestone | 0d | 2021-05-11 | 2021-05-11 | 58FF | 0d |  |  |  |  |

Notes:
- 61: The license will be paid monthly for the entire period of use of the tool.
